| TaskID | TaskName | StartDate | EndDate | resources | Progress | Predecessor |
| --- | --- | --- | --- | --- | --- | --- |
| 1 | Adaptive Temporal Scaling in the Space-Time Cube | 2026-02-19T09:00:00 | 2026-06-30T17:00:00 | Primary researcher/developer Primary researcher/developer, Academic supervisor Academic supervisor, Existing STC infrastructure Existing STC infrastructure, Dashboard UI skeleton Dashboard UI skeleton, Chicago crime dataset Chicago crime dataset | 23 |  |
| 2 | · Manual density-aware scaling (user-driven time slicing) — consolidate baseline | 2026-02-19T09:00:00 | 2026-03-12T17:00:00 | Primary researcher/developer Primary researcher/developer, Existing STC infrastructure Existing STC infrastructure, Chicago crime dataset Chicago crime dataset | 25 |  |
| 3 | · · User-driven time slicing prototype (mock data) — done | 2026-02-19T09:00:00 | 2026-02-22T17:00:00 | Primary researcher/developer Primary researcher/developer, Existing STC infrastructure Existing STC infrastructure | 100 |  |
| 4 | · · Refactor + tests + reproducible configs (not started) | 2026-02-23T09:00:00 | 2026-03-03T17:00:00 | Primary researcher/developer Primary researcher/developer, Existing STC infrastructure Existing STC infrastructure | 0 | 3 |
| 5 | · · Integrate + validate on Chicago crime dataset (pending) | 2026-03-04T09:00:00 | 2026-03-07T17:00:00 | Primary researcher/developer Primary researcher/developer, Chicago crime dataset Chicago crime dataset | 0 | 4 |
| 6 | · · Documentation: methods text for manual mode (not started) | 2026-03-08T09:00:00 | 2026-03-12T17:00:00 | Primary researcher/developer Primary researcher/developer | 0 | 4 |
| 7 | · Automated temporal scaling (formal scaling function) — in parallel with manual; goal: mid-March | 2026-02-23T09:00:00 | 2026-03-15T17:00:00 | Primary researcher/developer Primary researcher/developer, Existing STC infrastructure Existing STC infrastructure, Chicago crime dataset Chicago crime dataset, Academic supervisor Academic supervisor | 0 |  |
| 8 | · · Set requirements + formal constraints | 2026-02-23T09:00:00 | 2026-02-28T17:00:00 | Primary researcher/developer Primary researcher/developer, Academic supervisor Academic supervisor | 0 |  |
| 9 | · · Implementation (automated scaling) + basic tests | 2026-03-01T09:00:00 | 2026-03-10T17:00:00 | Primary researcher/developer Primary researcher/developer, Existing STC infrastructure Existing STC infrastructure | 0 | 8 |
| 10 | · · Testing + calibration on dataset | 2026-03-11T09:00:00 | 2026-03-13T17:00:00 | Primary researcher/developer Primary researcher/developer, Chicago crime dataset Chicago crime dataset | 0 | 9 |
| 11 | · · Documentation: automated mode + parameters + usage notes | 2026-03-14T09:00:00 | 2026-03-15T17:00:00 | Primary researcher/developer Primary researcher/developer | 0 | 10 |
| 12 | · Semi-automated scaling (density-based boundary suggestion) — next | 2026-03-16T09:00:00 | 2026-04-10T17:00:00 | Primary researcher/developer Primary researcher/developer, Existing STC infrastructure Existing STC infrastructure, Chicago crime dataset Chicago crime dataset, Academic supervisor Academic supervisor | 0 |  |
| 13 | · · Set requirements (semi-automated) | 2026-03-16T09:00:00 | 2026-03-20T17:00:00 | Primary researcher/developer Primary researcher/developer, Academic supervisor Academic supervisor | 0 | 5,11 |
| 14 | · · Implementation (boundary suggestion) | 2026-03-21T09:00:00 | 2026-04-03T17:00:00 | Primary researcher/developer Primary researcher/developer, Existing STC infrastructure Existing STC infrastructure | 0 | 13 |
| 15 | · · Testing (semi-automated) + dataset validation | 2026-04-04T09:00:00 | 2026-04-07T17:00:00 | Primary researcher/developer Primary researcher/developer, Chicago crime dataset Chicago crime dataset | 0 | 14 |
| 16 | · · Documentation: semi-automated mode + workflow notes | 2026-04-08T09:00:00 | 2026-04-10T17:00:00 | Primary researcher/developer Primary researcher/developer | 0 | 15 |
| 17 | · Context-aware scaling (new mode) — requirements → implementation → testing | 2026-04-11T09:00:00 | 2026-05-10T17:00:00 | Primary researcher/developer Primary researcher/developer, Existing STC infrastructure Existing STC infrastructure, Chicago crime dataset Chicago crime dataset, Academic supervisor Academic supervisor | 0 |  |
| 18 | · · Set requirements (context-aware scaling) | 2026-04-11T09:00:00 | 2026-04-18T17:00:00 | Primary researcher/developer Primary researcher/developer, Academic supervisor Academic supervisor | 0 | 16 |
| 19 | · · Implementation (context-aware scaling) | 2026-04-19T09:00:00 | 2026-05-02T17:00:00 | Primary researcher/developer Primary researcher/developer, Existing STC infrastructure Existing STC infrastructure | 0 | 18 |
| 20 | · · Testing + dataset validation (context-aware scaling) | 2026-05-03T09:00:00 | 2026-05-05T17:00:00 | Primary researcher/developer Primary researcher/developer, Chicago crime dataset Chicago crime dataset | 0 | 19 |
| 21 | · · Documentation: context-aware mode + assumptions + usage notes | 2026-05-06T09:00:00 | 2026-05-10T17:00:00 | Primary researcher/developer Primary researcher/developer | 0 | 20 |
| 22 | · Dashboard integration (in progress; detailed tasks will be added later) | 2026-02-19T09:00:00 | 2026-05-31T17:00:00 | Primary researcher/developer Primary researcher/developer, Dashboard UI skeleton Dashboard UI skeleton, Existing STC infrastructure Existing STC infrastructure | 40 |  |
| 23 | · Comparative analysis (manual vs automated vs semi vs context-aware) | 2026-05-11T09:00:00 | 2026-05-25T17:00:00 | Primary researcher/developer Primary researcher/developer, Chicago crime dataset Chicago crime dataset, Academic supervisor Academic supervisor | 0 | 21 |
| 24 | · Evaluation (design + run + analyze) | 2026-05-26T09:00:00 | 2026-06-15T17:00:00 | Primary researcher/developer Primary researcher/developer, Academic supervisor Academic supervisor | 0 | 23 |
| 25 | · Thesis writing (continuous) | 2026-02-19T09:00:00 | 2026-06-30T17:00:00 | Primary researcher/developer Primary researcher/developer, Academic supervisor Academic supervisor | 20 |  |
| 26 | · · Background + related work + methods drafting (Feb–Mar) | 2026-02-19T09:00:00 | 2026-03-31T17:00:00 | Primary researcher/developer Primary researcher/developer | 25 |  |
| 27 | · · Results + discussion + final edits (Apr–Jun) | 2026-04-01T09:00:00 | 2026-06-30T17:00:00 | Primary researcher/developer Primary researcher/developer, Academic supervisor Academic supervisor | 5 | 26 |
| 28 | · Submission milestone (end of June) | 2026-06-30T12:00:00 | 2026-06-30T12:30:00 | Primary researcher/developer Primary researcher/developer | 0 | 24,27 |
